# BBG RA AMS PLAN v1.0

Schedule from MS Project, 2013-09-11 to 2013-10-31.
IBM

## Calendars

- 标准: Mon-Fri 08:00-12:00, 13:00-17:00; Sat-Sun off.

## Resources

| Resource |
| --- |
| 丁勇 |
| 王姿 |
| 何德辉 |
| 杨进 |

## Schedule

| ID | WBS | Task | Duration | Start | Finish | Predecessors | Total slack | Constraint | Resources | Work | Text1 |
| --- | --- | --- | --- | --- | --- | --- | --- | --- | --- | --- | --- |
| 1 | 1 | **BBG_API_PLAN** | 37d? | 2013-09-11 | 2013-10-31 |  | 0d |  |  | 1000h |  |
| 2 | 1.1 | **数据逻辑/SQL取数脚本** | 13d? | 2013-09-11 | 2013-09-27 |  | 24d |  |  | 1000h |  |
| 3 | 1.1.1 | **Master_PRODUCT 主数据表格** | 8d? | 2013-09-11 | 2013-09-20 |  | 29d |  |  |  |  |
| 4 | 1.1.1.1 | Master_PRODUCT 主数据_商品 | 8d? | 2013-09-11 | 2013-09-20 |  | 5d | finish no earlier than 2013-09-20 |  |  | 金辅君/陈艳 |
| 5 | 1.1.1.2 | Master_supplier主数据_供应商 | 8d | 2013-09-11 | 2013-09-20 |  | 5d | finish no earlier than 2013-09-20 |  |  | 金辅君/陈艳 |
| 6 | 1.1.1.3 | Master_Generic_supplier 主数据_通用_供应商 | 8d | 2013-09-11 | 2013-09-20 |  | 5d | finish no earlier than 2013-09-20 |  |  | 金辅君/陈艳 |
| 7 | 1.1.1.4 | Master_promotion 主数据_促销 | 8d? | 2013-09-11 | 2013-09-20 |  | 5d | finish no earlier than 2013-09-20 |  |  | 金辅君/陈艳 |
| 8 | 1.1.1.5 | Master_promotion_TYPE | 8d? | 2013-09-11 | 2013-09-20 |  | 5d | finish no earlier than 2013-09-20 |  |  | 金辅君/陈艳 |
| 9 | 1.1.1.6 | Master_promotion_Page_TYPE 主数据_促销_版面_类型 | 8d? | 2013-09-11 | 2013-09-20 |  | 5d | finish no earlier than 2013-09-20 |  |  | 金辅君/陈艳 |
| 10 | 1.1.1.7 | Master_ASSOrtment_status_TYPE | 8d? | 2013-09-11 | 2013-09-20 |  | 5d | finish no earlier than 2013-09-20 |  |  | 金辅君/陈艳 |
| 11 | 1.1.1.8 | master_sales_type 主数据_销售_方式 | 8d? | 2013-09-11 | 2013-09-20 |  | 5d | finish no earlier than 2013-09-20 |  |  | 金辅君/陈艳 |
| 12 | 1.1.1.9 | master_sales_tender 交易型_销售_支付方式 | 8d? | 2013-09-11 | 2013-09-20 |  | 5d | finish no earlier than 2013-09-20 |  |  | 金辅君/陈艳 |
| 13 | 1.1.1.10 | Master_customer 主数据_顾客 | 8d? | 2013-09-11 | 2013-09-20 |  | 5d | finish no earlier than 2013-09-20 |  |  | 金辅君/陈艳 |
| 14 | 1.1.1.11 | master_other_income_type 主数据_其他_收入_类型 | 8d? | 2013-09-11 | 2013-09-20 |  | 5d | finish no earlier than 2013-09-20 |  |  | 金辅君/陈艳 |
| 15 | 1.1.1.12 | master_assets_type 主数据_资产_类型 | 8d? | 2013-09-11 | 2013-09-20 |  | 5d | finish no earlier than 2013-09-20 |  |  | 金辅君/陈艳 |
| 16 | 1.1.2 | **Tables for Transactional sales Data (pos) 交易型销售数据表格（POS）** | 5d | 2013-09-16 | 2013-09-20 |  | 5d |  |  |  |  |
| 17 | 1.1.2.1 | TXN_sales_header 交易型_销售_标头 | 5d | 2013-09-16 | 2013-09-20 |  | 5d | finish no earlier than 2013-09-20 |  |  | 金辅君/陈艳 |
| 18 | 1.1.2.2 | TXN_sales_tender 交易型_销售_支付方式 | 5d | 2013-09-16 | 2013-09-20 |  | 5d | finish no earlier than 2013-09-20 |  |  | 金辅君/陈艳 |
| 19 | 1.1.2.3 | TXN_sales_detail 交易型_销售_细节 | 5d | 2013-09-16 | 2013-09-20 |  | 5d | finish no earlier than 2013-09-20 |  |  | 金辅君/陈艳 |
| 20 | 1.1.3 | **Tables for Transactional Inventory Data 交易型库存数据表格** | 5d? | 2013-09-16 | 2013-09-20 |  | 29d |  |  | 520h |  |
| 21 | 1.1.3.1 | TXN_store_cost_Of_GOODS 交易型_门店_商品_销售_成本 | 5d | 2013-09-16 | 2013-09-20 |  | 5d | finish no earlier than 2013-09-20 | 丁勇 | 40h | 金辅君/陈艳 |
| 22 | 1.1.3.2 | TXN_STORE_Inventory 交易型_门店_库存 | 5d | 2013-09-16 | 2013-09-20 |  | 5d | finish no earlier than 2013-09-20 | 丁勇 | 40h | 金辅君/陈艳 |
| 23 | 1.1.3.3 | TXN_DC_Inventory 交易型_DC_库存 | 5d | 2013-09-16 | 2013-09-20 |  | 5d | finish no earlier than 2013-09-20 | 丁勇 | 40h | 金辅君/陈艳 |
| 24 | 1.1.3.4 | TXN_store_purchase_from_supplier_cost 交易型_门店_从_供应商_购买_成本 | 5d | 2013-09-16 | 2013-09-20 |  | 5d | finish no earlier than 2013-09-20 | 王姿 | 40h | 金辅君/陈艳 |
| 25 | 1.1.3.5 | TXN_store_Returns_to_supplier_cost 交易型_门店_退货_至_供应商_成本 | 5d | 2013-09-16 | 2013-09-20 |  | 5d | finish no earlier than 2013-09-20 | 丁勇 | 40h | 金辅君/陈艳 |
| 26 | 1.1.3.6 | TXN_dc_purchase_from_supplier_cost 交易型_物流中心_从_供应商_购买_成本 | 5d | 2013-09-16 | 2013-09-20 |  | 5d | finish no earlier than 2013-09-20 | 丁勇 | 40h | 金辅君/陈艳 |
| 27 | 1.1.3.7 | TXN_dc_returns_to_supplier_cost 交易型_物流中心_退货_至_供应商_成本 | 5d | 2013-09-16 | 2013-09-20 |  | 5d | finish no earlier than 2013-09-20 | 丁勇 | 40h | 金辅君/陈艳 |
| 28 | 1.1.3.8 | TXN_store_purchase_from_DC_cost 交易型_门店_从_物流中心_购买_成本 | 5d | 2013-09-16 | 2013-09-20 |  | 5d | finish no earlier than 2013-09-20 | 丁勇 | 40h | 金辅君/陈艳 |
| 29 | 1.1.3.9 | TXN_store_return_to_DC_cost 交易型_门店_退货_至_物流中心_成本 | 5d | 2013-09-16 | 2013-09-20 |  | 5d | finish no earlier than 2013-09-20 | 丁勇 | 40h | 金辅君/陈艳 |
| 30 | 1.1.3.10 | txn_DC_shrink 交易型_物流中心_损耗 | 5d | 2013-09-16 | 2013-09-20 |  | 5d | finish no earlier than 2013-09-20 | 王姿 | 40h | 金辅君/陈艳 |
| 31 | 1.1.3.11 | txn_Store_shrink 交易型_门店_损耗 | 5d | 2013-09-16 | 2013-09-20 |  | 5d | finish no earlier than 2013-09-20 | 丁勇 | 40h | 金辅君/陈艳 |
| 32 | 1.1.3.12 | txn_DC_stock_take_shrink 交易型_物流中心_盘_点_损耗 | 5d | 2013-09-16 | 2013-09-20 |  | 5d | finish no earlier than 2013-09-20 | 王姿 | 40h | 金辅君/陈艳 |
| 33 | 1.1.3.13 | txn_Store_stock_take_shrink 交易型_门店_盘_点_损耗 | 5d | 2013-09-16 | 2013-09-20 |  | 5d | finish no earlier than 2013-09-20 | 丁勇 | 40h | 金辅君/陈艳 |
| 34 | 1.1.3.14 | txn_DC_orders_to_Supplier 交易型_物流中心_向_供应商_订货 | 5d? | 2013-09-16 | 2013-09-20 |  | 5d | finish no earlier than 2013-09-20 |  |  | 金辅君/陈艳 |
| 35 | 1.1.3.15 | txn_Store_orders_to_Supplier 交易型_门店_向_供应商_订货 | 5d? | 2013-09-16 | 2013-09-20 |  | 5d | finish no earlier than 2013-09-20 |  |  | 金辅君/陈艳 |
| 36 | 1.1.3.16 | txn_Store_orders_to_dc 交易型_门店_向_物流中心_订货 | 5d? | 2013-09-16 | 2013-09-20 |  | 5d | finish no earlier than 2013-09-20 |  |  | 金辅君/陈艳 |
| 37 | 1.1.3.17 | txn_account_payable_by_supplier 交易型_按_供应商_应付_账款 | 5d? | 2013-09-16 | 2013-09-20 | 36 | 5d | finish no earlier than 2013-09-20 |  |  | 金辅君/陈艳 |
| 38 | 1.1.3.18 | txn_other_income_by_supplier | 5d? | 2013-09-16 | 2013-09-20 | 37 | 5d | finish no earlier than 2013-09-20 |  |  | 金辅君/陈艳 |
| 39 | 1.1.3.19 | txn_assets_detail 交易型_资产_明细 | 5d? | 2013-09-16 | 2013-09-20 | 38 | 5d | finish no earlier than 2013-09-20 |  |  | 金辅君/陈艳 |

Notes:
- 4: 金辅君
- 5: 金辅君
- 6: 金辅君
- 7: 金辅君
- 8: 金辅君
- 9: 金辅君
- 10: 金辅君
- 11: 金辅君
- 12: 金辅君
- 13: 金辅君
- 14: 金辅君
- 15: 金辅君
- 17: 唐塞龙
- 18: 金辅君
- 19: 唐塞龙
- 21: 唐塞龙
- 22: 唐塞龙
- 23: 唐塞龙
- 24: 唐塞龙
- 25: 唐塞龙
- 26: 唐塞龙
- 27: 唐塞龙
- 28: 唐塞龙
- 29: 唐塞龙
- 30: 唐塞龙
- 31: 唐塞龙
- 32: 唐塞龙
- 33: 唐塞龙
- 34: 唐塞龙
- 35: 唐塞龙
- 36: 唐塞龙
- 37: 唐塞龙
- 38: 唐塞龙
- 39: 唐塞龙

| ID | WBS | Task | Duration | Start | Finish | Predecessors | Total slack | Constraint | Resources | Work | Text1 |
| --- | --- | --- | --- | --- | --- | --- | --- | --- | --- | --- | --- |
| 40 | 1.1.4 | **Tables for master financial Data** | 5d | 2013-09-23 | 2013-09-27 |  | 24d |  |  | 280h |  |
| 41 | 1.1.4.1 | master_city_province 主数据_城市_省份 | 5d | 2013-09-23 | 2013-09-27 |  | 24d | finish no earlier than 2013-09-27 | 何德辉 | 40h | 金辅君/陈艳 |
| 42 | 1.1.4.2 | master_division_department 主数据_处别_部门 | 5d | 2013-09-23 | 2013-09-27 |  | 24d | finish no earlier than 2013-09-27 | 何德辉 | 40h | 金辅君/陈艳 |
| 43 | 1.1.4.3 | master_REGION 主数据_区域 | 5d | 2013-09-23 | 2013-09-27 |  | 24d | finish no earlier than 2013-09-27 | 何德辉 | 40h | 金辅君/陈艳 |
| 44 | 1.1.4.4 | master_format 主数据_业态 | 5d | 2013-09-23 | 2013-09-27 |  | 24d | finish no earlier than 2013-09-27 | 何德辉 | 40h | 金辅君/陈艳 |
| 45 | 1.1.4.5 | Master_outlet 主数据_门店 | 5d | 2013-09-23 | 2013-09-27 |  | 24d | finish no earlier than 2013-09-27 | 杨进 | 40h | 金辅君/陈艳 |
| 46 | 1.1.4.6 | master_account_code 主数据_会计_科目 | 5d | 2013-09-23 | 2013-09-27 |  | 24d | finish no earlier than 2013-09-27 | 杨进 | 40h | 金辅君/陈艳 |
| 47 | 1.1.4.7 | master_job_DESCRIPTION_GRADE 主数据_工作_描述_级别 | 5d | 2013-09-23 | 2013-09-27 |  | 24d | finish no earlier than 2013-09-27 | 杨进 | 40h | 金辅君/陈艳 |
| 48 | 1.1.5 | **Tables for Transactional financial Data** | 5d | 2013-09-23 | 2013-09-27 |  | 24d |  |  | 200h |  |
| 49 | 1.1.5.1 | txn_contribution_actual 交易型_损益_实际 | 5d | 2013-09-23 | 2013-09-27 |  | 24d | finish no earlier than 2013-09-27 | 何德辉 | 40h | 金辅君/陈艳 |
| 50 | 1.1.5.2 | txn_contribution_budgeted 交易型_损益_预算 | 5d | 2013-09-23 | 2013-09-27 | 49 | 24d | finish no earlier than 2013-09-27 | 何德辉 | 40h | 金辅君/陈艳 |
| 51 | 1.1.5.3 | txn_store_area 交易型_门店_面积 | 5d | 2013-09-23 | 2013-09-27 |  | 24d | finish no earlier than 2013-09-27 | 何德辉 | 40h | 金辅君/陈艳 |
| 52 | 1.1.5.4 | txn_EMPLOYEE_worked_HOURS 交易型_员工_工作_小时 | 5d | 2013-09-23 | 2013-09-27 | 51 | 24d | finish no earlier than 2013-09-27 | 何德辉 | 40h | 金辅君/陈艳 |
| 53 | 1.1.5.5 | txn_outlet_inventory 交易型_门店_库存 | 5d | 2013-09-23 | 2013-09-27 |  | 24d | finish no earlier than 2013-09-27 | 杨进 | 40h | 金辅君/陈艳 |
| 54 | 1.2 | **DB管理及UC4运行计划** | 10d | 2013-09-16 | 2013-09-27 |  | 24d |  |  |  |  |
| 55 | 1.2.1 | **DB服务器及DB用户创建** | 2d | 2013-09-16 | 2013-09-17 |  | 32d |  |  |  |  |
| 56 | 1.2.1.1 | DB服务器、空间、用户 | 2d | 2013-09-16 | 2013-09-17 |  | 32d | finish no earlier than 2013-09-17 |  |  | 何德辉/郭迪 |
| 57 | 1.2.1.2 | Dblink创建 | 2d | 2013-09-16 | 2013-09-17 |  | 32d | finish no earlier than 2013-09-17 |  |  | 何德辉/郭迪 |
| 58 | 1.2.2 | **表结构及视图** | 3d | 2013-09-18 | 2013-09-20 |  | 29d |  |  |  |  |
| 59 | 1.2.2.1 | 实体表、索引 | 3d | 2013-09-18 | 2013-09-20 |  | 29d | finish no earlier than 2013-09-20 |  |  | 何德辉/郭迪 |
| 60 | 1.2.2.2 | 备份表 | 3d | 2013-09-18 | 2013-09-20 |  | 29d | finish no earlier than 2013-09-20 |  |  | 何德辉/郭迪 |
| 61 | 1.2.2.3 | PCK程序编写 | 3d | 2013-09-18 | 2013-09-20 |  | 29d | finish no earlier than 2013-09-20 |  |  | 何德辉/郭迪 |
| 62 | 1.2.3 | **UC4计划任务** | 5d | 2013-09-23 | 2013-09-27 |  | 24d |  |  |  |  |
| 63 | 1.2.3.1 | KSH计划任务 | 5d | 2013-09-23 | 2013-09-27 |  | 24d | finish no earlier than 2013-09-27 |  |  | 何德辉 |
| 64 | 1.2.3.2 | KSH加入UC4 | 1d | 2013-09-27 | 2013-09-27 |  | 24d | start no earlier than 2013-09-27 |  |  | 何德辉 |

Notes:
- 41: 陈虹
- 42: 陈虹
- 43: 陈虹
- 44: 陈虹
- 45: 陈虹
- 46: 陈虹
- 47: 陈虹
- 49: 陈虹
- 50: 陈虹
- 51: 陈虹
- 52: 陈虹
- 53: 陈虹
- 56: 郭迪
- 57: 郭迪
- 59: 何德辉/郭迪
- 60: 何德辉/郭迪
- 61: 何德辉/郭迪
- 63: 何德辉
- 64: 丁勇

| ID | WBS | Task | Duration | Start | Finish | Total slack | Constraint |
| --- | --- | --- | --- | --- | --- | --- | --- |
| 65 | 1.3 | **上线试运行** | 25d | 2013-09-27 | 2013-10-31 | 0d |  |
| 66 | 1.3.1 | **上线试运行监控** | 25d | 2013-09-27 | 2013-10-31 | 0d |  |
| 67 | 1.3.1.1 | 监控 | 25d | 2013-09-27 | 2013-10-31 | 0d | finish no earlier than 2013-10-31 |

Notes:
- 67: 丁勇
