# BBG RA AMS PLAN v1.0

Schedule from MS Project, 2013-06-28 to 2013-07-26.
IBM

## Calendars

- 标准: Mon-Fri 08:00-12:00, 13:00-17:00; Sat-Sun off.

## Resources

| Resource |
| --- |
| 丁勇 |
| 王姿 |
| 何德辉 |
| 杨进 |

## Schedule

| ID | WBS | Task | Duration | Start | Finish | Predecessors | Total slack | Free slack | Constraint | Resources | Work | Text3 | Text1 |
| --- | --- | --- | --- | --- | --- | --- | --- | --- | --- | --- | --- | --- | --- |
| 1 | 1 | **BBG RA AMS PLAN** | 21d | 2013-06-28 | 2013-07-26 |  | 0d |  |  |  | 296h |  |  |
| 2 | 1.1 | **历史数据导入** | 21d | 2013-06-28 | 2013-07-26 |  | 0d |  |  |  | 296h |  |  |
| 3 | 1.1.1 | **维度校验** | 1d | 2013-06-28 | 2013-06-28 |  | 20d |  |  |  |  | 已完成 |  |
| 4 | 1.1.1.1 | 融通校验-商品/门店/供应商 | 1d | 2013-06-28 | 2013-06-28 |  | 20d |  |  |  |  | 已完成 |  |
| 5 | 1.1.1.2 | 金立校验-商品/门店/供应商 | 1d | 2013-06-28 | 2013-06-28 |  | 20d |  |  |  |  | 已完成 |  |
| 6 | 1.1.2 | **RA FACT接口表整理** | 1d | 2013-06-28 | 2013-06-28 |  | 20d |  |  |  |  | 已完成 |  |
| 7 | 1.1.2.1 | 销售 | 1d | 2013-06-28 | 2013-06-28 |  | 20d |  |  |  |  | 已完成 |  |
| 8 | 1.1.2.2 | 订货入库 | 1d | 2013-06-28 | 2013-06-28 |  | 20d |  |  |  |  | 已完成 |  |
| 9 | 1.1.2.3 | 供应商销售 | 1d | 2013-06-28 | 2013-06-28 |  | 20d |  |  |  |  | 已完成 |  |
| 10 | 1.1.2.4 | 库存调整 | 1d | 2013-06-28 | 2013-06-28 |  | 20d |  |  |  |  | 已完成 |  |
| 11 | 1.1.2.5 | 退货返厂 | 1d | 2013-06-28 | 2013-06-28 |  | 20d |  |  |  |  | 已完成 |  |
| 12 | 1.1.2.6 | 配送 | 1d | 2013-06-28 | 2013-06-28 |  | 20d |  |  |  |  | 已完成 |  |
| 13 | 1.1.3 | **取数视图编写** | 7d | 2013-07-09 | 2013-07-17 |  | 4d | 0d |  |  | 152h |  |  |
| 14 | 1.1.3.1 | 销售取数逻辑讨论确认 | 1d | 2013-07-09 | 2013-07-09 |  | 7d | 0d | finish no earlier than 2013-07-09 | 丁勇 | 8h |  | 丁勇/陈艳 |
| 15 | 1.1.3.2 | 销售取数视图编写 | 3d | 2013-07-10 | 2013-07-12 | 14 | 7d |  | finish no earlier than 2013-07-12 | 丁勇 | 24h |  | 丁勇/陈艳 |
| 16 | 1.1.3.3 | 订货入库逻辑讨论确认 | 1d | 2013-07-10 | 2013-07-10 |  | 7d | 0d | finish no earlier than 2013-07-10 | 丁勇 | 8h |  | 王姿/陈艳 |
| 17 | 1.1.3.4 | 订货入库取数视图编写 | 2d | 2013-07-11 | 2013-07-12 | 16 | 7d |  | finish no earlier than 2013-07-12 | 王姿 | 16h |  | 王姿/陈艳 |
| 18 | 1.1.3.5 | 供应商销售取数逻辑讨论确认 | 1d | 2013-07-10 | 2013-07-10 |  | 7d | 0d | start no earlier than 2013-07-10 | 丁勇 | 8h |  | 丁勇/陈艳 |
| 19 | 1.1.3.6 | 供应商销售取数视图编写 | 2d | 2013-07-11 | 2013-07-12 | 18 | 7d |  | finish no earlier than 2013-07-12 | 丁勇 | 16h |  | 丁勇/陈艳 |
| 20 | 1.1.3.7 | 库存调整取数逻辑讨论确认 | 1d | 2013-07-11 | 2013-07-11 |  | 7d | 0d | finish no earlier than 2013-07-11 | 丁勇 | 8h |  | 丁勇/陈艳 |
| 21 | 1.1.3.8 | 库存调整取数视图编写 | 1d | 2013-07-12 | 2013-07-12 | 20 | 7d |  | finish no earlier than 2013-07-12 | 丁勇 | 8h |  | 丁勇/陈艳 |
| 22 | 1.1.3.9 | 退货返厂取数逻辑讨论确认 | 1d | 2013-07-10 | 2013-07-10 |  | 7d | 0d | finish no earlier than 2013-07-10 | 丁勇 | 8h |  | 王姿/陈艳 |
| 23 | 1.1.3.10 | 退货返厂取数视图编写 | 2d | 2013-07-11 | 2013-07-12 | 22 | 7d |  | finish no earlier than 2013-07-12 | 王姿 | 16h |  | 王姿/陈艳 |
| 24 | 1.1.3.11 | 配送取数逻辑讨论确认 | 1d | 2013-07-10 | 2013-07-10 |  | 7d | 0d | finish no earlier than 2013-07-10 | 丁勇 | 8h |  | 丁勇/陈艳 |
| 25 | 1.1.3.12 | 配送取数视图编写 | 2d | 2013-07-11 | 2013-07-12 | 24 | 7d |  | finish no earlier than 2013-07-12 | 王姿 | 16h |  | 王姿/陈艳 |
| 26 | 1.1.3.13 | 金立销售取数逻辑讨论确认 | 1d | 2013-07-12 | 2013-07-12 |  | 4d | 0d | start no earlier than 2013-07-12 | 丁勇 | 8h |  | 丁勇/陈艳 |
| 27 | 1.1.3.14 | 金立销售取数视图编写 | 3d | 2013-07-15 | 2013-07-17 | 26 | 1d |  | finish no earlier than 2013-07-17 |  |  |  | 任重昊 |

Notes:
- 14: 丁勇
- 15: 丁勇
- 16: 王姿
- 17: 王姿
- 18: 丁勇
- 19: 丁勇
- 20: 丁勇
- 21: 丁勇
- 22: 王姿
- 23: 王姿
- 24: 丁勇
- 25: 王姿
- 26: 丁勇
- 27: 任重昊

| ID | WBS | Task | Duration | Start | Finish | Predecessors | Total slack | Free slack | Constraint | Resources | Work | Text3 |
| --- | --- | --- | --- | --- | --- | --- | --- | --- | --- | --- | --- | --- |
| 28 | 1.1.4 | **ODI接口设计** | 10d | 2013-07-15 | 2013-07-26 |  | 0d |  |  |  | 144h | 进行中 |
| 29 | 1.1.4.1 | 销售—接口开发 | 2d | 2013-07-18 | 2013-07-19 | 13 | 4d | 0d | finish no earlier than 2013-07-16 | 何德辉 | 16h |  |
| 30 | 1.1.4.2 | 销售—数据校验 | 1d | 2013-07-22 | 2013-07-22 | 29 | 4d |  | start no earlier than 2013-06-17 | 何德辉 | 8h |  |
| 31 | 1.1.4.3 | 订货入库—接口开发 | 1d | 2013-07-18 | 2013-07-18 |  | 5d | 0d | finish no earlier than 2013-07-18 | 何德辉 | 8h |  |
| 32 | 1.1.4.4 | 订货入库—数据校验 | 1d | 2013-07-19 | 2013-07-19 | 31 | 2d |  |  | 何德辉 | 8h |  |
| 33 | 1.1.4.5 | 供应商销售—接口开发 | 2d | 2013-07-15 | 2013-07-16 |  | 7d | 0d | finish no earlier than 2013-07-16 | 杨进 | 16h |  |
| 34 | 1.1.4.6 | 供应商销售—数据校验 | 1d | 2013-07-17 | 2013-07-17 | 33 | 4d |  |  | 杨进 | 8h |  |
| 35 | 1.1.4.7 | 库存调整—接口开发 | 1d | 2013-07-18 | 2013-07-18 |  | 5d | 0d | start no earlier than 2013-07-18 | 杨进 | 8h |  |
| 36 | 1.1.4.8 | 库存调整—数据校验 | 1d | 2013-07-19 | 2013-07-19 | 35 | 2d |  |  | 杨进 | 8h |  |
| 37 | 1.1.4.9 | 退货返厂—接口开发 | 1d | 2013-07-22 | 2013-07-22 |  | 3d | 0d | start no earlier than 2013-07-22 | 何德辉 | 8h |  |
| 38 | 1.1.4.10 | 退货返厂—数据校验 | 1d | 2013-07-23 | 2013-07-23 | 37 | 3d |  |  | 何德辉 | 8h |  |
| 39 | 1.1.4.11 | 配送—接口开发 | 1d | 2013-07-22 | 2013-07-22 |  | 3d | 0d | start no earlier than 2013-07-22 | 杨进 | 8h |  |
| 40 | 1.1.4.12 | 配送—数据校验 | 1d | 2013-07-23 | 2013-07-23 | 39 | 3d |  | start no earlier than 2013-07-23 | 杨进 | 8h |  |
| 41 | 1.1.4.13 | 金立销售—接口开发（SDE/SIL） | 3d | 2013-07-23 | 2013-07-25 |  | 0d |  | finish no earlier than 2013-07-25 | 杨进 | 24h |  |
| 42 | 1.1.4.14 | 金立销售—数据校验 | 1d | 2013-07-26 | 2013-07-26 | 41 | 0d |  | start no earlier than 2013-07-23 | 杨进 | 8h |  |
| 43 | 1.2 | **培训交接** | 14d | 2013-07-02 | 2013-07-19 |  | 5d |  |  |  |  |  |
| 44 | 1.2.1 | **ODI培训** | 3d | 2013-07-02 | 2013-07-04 |  | 16d |  |  |  |  |  |
| 45 | 1.2.1.1 | ODI总体介绍 | 1d | 2013-07-02 | 2013-07-02 |  | 18d |  | start no earlier than 2013-07-02 |  |  |  |
| 46 | 1.2.1.2 | 维度ETL | 1d | 2013-07-02 | 2013-07-02 |  | 18d |  | start no earlier than 2013-07-02 |  |  |  |
| 47 | 1.2.1.3 | 维度ETL演练—RETAIL_TYPE | 3d | 2013-07-02 | 2013-07-04 |  | 16d |  | finish no earlier than 2013-07-04 |  |  |  |
| 48 | 1.2.1.4 | 事实ETL | 1d | 2013-07-02 | 2013-07-02 |  | 18d |  | start no earlier than 2013-07-02 |  |  |  |
| 49 | 1.2.1.5 | 事实ETL演练—SUPPLIER_SALES | 3d | 2013-07-02 | 2013-07-04 |  | 16d |  | finish no earlier than 2013-07-04 |  |  |  |
| 50 | 1.2.1.6 | 汇总表ETL | 1d | 2013-07-02 | 2013-07-02 |  | 18d |  | start no earlier than 2013-07-02 |  |  |  |
| 51 | 1.2.1.7 | 汇总表ETL演练—BBG_RA_SLS_IT_DY_A | 3d | 2013-07-02 | 2013-07-04 |  | 16d |  | finish no earlier than 2013-07-04 |  |  |  |

Notes:
- 29: 何德辉
- 30: 何德辉
- 31: 何德辉
- 32: 何德辉
- 33: 杨进
- 34: 杨进
- 35: 杨进
- 36: 杨进
- 37: 何德辉
- 38: 何德辉
- 39: 杨进
- 40: 杨进
- 41: 杨进
- 42: 杨进

| ID | WBS | Task | Duration | Start | Finish | Total slack | Constraint |
| --- | --- | --- | --- | --- | --- | --- | --- |
| 52 | 1.2.2 | **OBIEE培训** | 9d | 2013-07-09 | 2013-07-19 | 5d |  |
| 53 | 1.2.2.1 | **模型设计** | 3d | 2013-07-09 | 2013-07-11 | 11d |  |
| 54 | 1.2.2.1.1 | 物理层/逻辑层/展现层 | 1d | 2013-07-09 | 2013-07-09 | 13d | start no earlier than 2013-07-09 |
| 55 | 1.2.2.1.2 | 模型设计演练—时间商品地点销售分析模型 | 1d | 2013-07-10 | 2013-07-10 | 12d | start no earlier than 2013-07-10 |
| 56 | 1.2.2.1.3 | 变量定义 | 1d | 2013-07-11 | 2013-07-11 | 11d | start no earlier than 2013-07-11 |
| 57 | 1.2.2.1.4 | 数据权限设计 | 1d | 2013-07-11 | 2013-07-11 | 11d | start no earlier than 2013-07-11 |
| 58 | 1.2.2.2 | 报表设计演练—销售日报表 | 2d | 2013-07-18 | 2013-07-19 | 5d | finish no earlier than 2013-07-19 |
| 59 | 1.2.2.3 | 仪表盘设计演练—商品销售和毛利 | 2d | 2013-07-18 | 2013-07-19 | 5d | finish no earlier than 2013-07-19 |
| 60 | 1.3 | **维度事实梳理** | 1d | 2013-06-28 | 2013-06-28 | 20d |  |
| 61 | 1.3.1 | **维度梳理** | 1d | 2013-06-28 | 2013-06-28 | 20d |  |
| 62 | 1.3.1.1 | 商品 | 1d | 2013-06-28 | 2013-06-28 | 20d |  |
| 63 | 1.3.1.2 | 门店 | 1d | 2013-06-28 | 2013-06-28 | 20d |  |
| 64 | 1.3.1.3 | 供应商 | 1d | 2013-06-28 | 2013-06-28 | 20d |  |
| 65 | 1.3.1.4 | 商品-地点 | 1d | 2013-06-28 | 2013-06-28 | 20d |  |
| 66 | 1.3.1.5 | 商品-地点-供应商 | 1d | 2013-06-28 | 2013-06-28 | 20d |  |
| 67 | 1.3.1.6 | 零售类型 | 1d | 2013-06-28 | 2013-06-28 | 20d |  |
| 68 | 1.3.2 | **事实梳理** | 1d | 2013-06-28 | 2013-06-28 | 20d |  |
| 69 | 1.3.2.1 | 库存水平 | 1d | 2013-06-28 | 2013-06-28 | 20d |  |
| 70 | 1.3.2.2 | 销售 | 1d | 2013-06-28 | 2013-06-28 | 20d |  |
| 71 | 1.3.2.3 | 销售打包组合商品 | 1d | 2013-06-28 | 2013-06-28 | 20d |  |
| 72 | 1.3.2.4 | 存货接收 | 1d | 2013-06-28 | 2013-06-28 | 20d |  |
| 73 | 1.3.2.5 | 供应商合规情况 | 1d | 2013-06-28 | 2013-06-28 | 20d |  |
| 74 | 1.3.2.6 | 供应商发票 | 1d | 2013-06-28 | 2013-06-28 | 20d |  |
| 75 | 1.3.2.7 | 减价 | 1d | 2013-06-28 | 2013-06-28 | 20d |  |
| 76 | 1.3.2.8 | 净成本 | 1d | 2013-06-28 | 2013-06-28 | 20d |  |
| 77 | 1.3.2.9 | 毛利 | 1d | 2013-06-28 | 2013-06-28 | 20d |  |
| 78 | 1.3.2.10 | 单位成本 | 1d | 2013-06-28 | 2013-06-28 | 20d |  |
| 79 | 1.3.2.11 | 定价 | 1d | 2013-06-28 | 2013-06-28 | 20d |  |
| 80 | 1.3.2.12 | 销售预算 | 1d | 2013-06-28 | 2013-06-28 | 20d |  |
| 81 | 1.3.2.13 | 供应商销售 | 1d | 2013-06-28 | 2013-06-28 | 20d |  |
| 82 | 1.3.2.14 | 供应商库存 | 1d | 2013-06-28 | 2013-06-28 | 20d |  |
| 83 | 1.3.2.15 | 供应商收入 | 1d | 2013-06-28 | 2013-06-28 | 20d |  |
| 84 | 1.3.2.16 | 批发销售 | 1d | 2013-06-28 | 2013-06-28 | 20d |  |
| 85 | 1.3.2.17 | 库存调整 | 1d | 2013-06-28 | 2013-06-28 | 20d |  |
| 86 | 1.3.2.18 | 库存转运 | 1d | 2013-06-28 | 2013-06-28 | 20d |  |
| 87 | 1.3.2.19 | 返厂 | 1d | 2013-06-28 | 2013-06-28 | 20d |  |

| ID | WBS | Task | Duration | Start | Finish | Total slack |
| --- | --- | --- | --- | --- | --- | --- |
| 88 | 1.4 | **数据校验** | 1d | 2013-06-28 | 2013-06-28 | 20d |
| 89 | 1.4.1 | **维度数据校验脚本编写** | 1d | 2013-06-28 | 2013-06-28 | 20d |
| 90 | 1.4.1.1 | 商品 | 1d | 2013-06-28 | 2013-06-28 | 20d |
| 91 | 1.4.1.2 | 地点 | 1d | 2013-06-28 | 2013-06-28 | 20d |
| 92 | 1.4.1.3 | 供应商 | 1d | 2013-06-28 | 2013-06-28 | 20d |
| 93 | 1.4.1.4 | 商品-地点 | 1d | 2013-06-28 | 2013-06-28 | 20d |
| 94 | 1.4.1.5 | 商品-地点-供应商 | 1d | 2013-06-28 | 2013-06-28 | 20d |
| 95 | 1.4.2 | **事实数据校验脚本编写** | 1d | 2013-06-28 | 2013-06-28 | 20d |
| 96 | 1.4.2.1 | 库存水平 | 1d | 2013-06-28 | 2013-06-28 | 20d |
| 97 | 1.4.2.2 | 销售 | 1d | 2013-06-28 | 2013-06-28 | 20d |
| 98 | 1.4.2.3 | 销售打包组合商品 | 1d | 2013-06-28 | 2013-06-28 | 20d |
| 99 | 1.4.2.4 | 存货接收 | 1d | 2013-06-28 | 2013-06-28 | 20d |
| 100 | 1.4.2.5 | 供应商合规情况 | 1d | 2013-06-28 | 2013-06-28 | 20d |
| 101 | 1.4.2.6 | 供应商发票 | 1d | 2013-06-28 | 2013-06-28 | 20d |
| 102 | 1.4.2.7 | 减价 | 1d | 2013-06-28 | 2013-06-28 | 20d |
| 103 | 1.4.2.8 | 净成本 | 1d | 2013-06-28 | 2013-06-28 | 20d |
| 104 | 1.4.2.9 | 毛利 | 1d | 2013-06-28 | 2013-06-28 | 20d |
| 105 | 1.4.2.10 | 单位成本 | 1d | 2013-06-28 | 2013-06-28 | 20d |
| 106 | 1.4.2.11 | 定价 | 1d | 2013-06-28 | 2013-06-28 | 20d |
| 107 | 1.4.2.12 | 销售预算 | 1d | 2013-06-28 | 2013-06-28 | 20d |
| 108 | 1.4.2.13 | 供应商销售 | 1d | 2013-06-28 | 2013-06-28 | 20d |
| 109 | 1.4.2.14 | 供应商库存 | 1d | 2013-06-28 | 2013-06-28 | 20d |
| 110 | 1.4.2.15 | 供应商收入 | 1d | 2013-06-28 | 2013-06-28 | 20d |
| 111 | 1.4.2.16 | 批发销售 | 1d | 2013-06-28 | 2013-06-28 | 20d |
| 112 | 1.4.2.17 | 库存调整 | 1d | 2013-06-28 | 2013-06-28 | 20d |
| 113 | 1.4.2.18 | 库存转运 | 1d | 2013-06-28 | 2013-06-28 | 20d |
| 114 | 1.4.2.19 | 返厂 | 1d | 2013-06-28 | 2013-06-28 | 20d |
