# 海波龙项目数据接口计划V1

Schedule from MS Project, 2013-12-09 to 2013-12-24.
Microsoft

## Calendars

- 标准: Mon-Fri 08:00-12:00, 13:00-17:00; Sat-Sun off.

## Resources

| Resource |
| --- |
| 海波龙项目组 |
| 郭迪 |
| 金辅君 |
| 何德辉 |
| 王勇昱 |
| 任重昊 |
| 陈艳 |
| 陈虹 |
| 杨进 |

## Schedule

| ID | WBS | Task | Duration | Start | Finish | Total slack | Constraint | Resources | Work |
| --- | --- | --- | --- | --- | --- | --- | --- | --- | --- |
| 1 | 1 | **接口方案确认** | 1d? | 2013-12-09 | 2013-12-09 | 4d |  | 陈艳 | 8h |
| 2 | 1.1 | RETEK接口数据确认 | 1d? | 2013-12-09 | 2013-12-09 | 4d |  |  |  |
| 3 | 1.2 | 生鲜办接口数据确认 | 1d? | 2013-12-09 | 2013-12-09 | 4d |  |  |  |
| 4 | 1.3 | 金力接口数据确认 | 1d? | 2013-12-09 | 2013-12-09 | 4d |  |  |  |
| 5 | 2 | **环境准备** | 5d? | 2013-12-09 | 2013-12-13 | 4d |  | 郭迪 | 64h |
| 6 | 2.1 | 中间库建设 | 1d? | 2013-12-09 | 2013-12-09 | 4d |  | 海波龙项目组 | 8h |
| 7 | 2.2 | 系统用户连接配置 | 1d? | 2013-12-13 | 2013-12-13 | 7d | finish no earlier than 2013-12-13 | 郭迪 | 8h |
| 8 | 2.3 | 各系统与中间库的连接测试 | 1d? | 2013-12-13 | 2013-12-13 | 7d | finish no earlier than 2013-12-13 | 郭迪 | 8h |
| 9 | 3 | **接口设计与开发** | 10d? | 2013-12-09 | 2013-12-20 | 2d |  | 何德辉 | 360h |
| 10 | 3.1 | **RETEK系统接口开发** | 6d? | 2013-12-12 | 2013-12-19 | 3d |  |  | 200h |
| 11 | 3.1.1 | **取数SQL脚本编写** | 3d? | 2013-12-12 | 2013-12-16 | 6d |  | 金辅君 | 184h |
| 12 | 3.1.1.1 | 平均库存接口SQL编写 | 2d? | 2013-12-12 | 2013-12-13 | 7d | start no earlier than 2013-12-12 | 陈虹 | 16h |
| 13 | 3.1.1.2 | 月末库存接口SQL编写 | 2d? | 2013-12-12 | 2013-12-13 | 7d | start no earlier than 2013-12-12 | 陈虹 | 16h |
| 14 | 3.1.1.3 | 平均客单接口SQL编写 | 2d? | 2013-12-12 | 2013-12-13 | 7d | start no earlier than 2013-12-12 | 杨进 | 16h |
| 15 | 3.1.1.4 | 客流接口SQL编写 | 2d? | 2013-12-12 | 2013-12-13 | 7d | start no earlier than 2013-12-12 | 杨进 | 16h |
| 16 | 3.1.1.5 | 分大类平均客单接口SQL编写 | 3d? | 2013-12-12 | 2013-12-16 | 6d | start no earlier than 2013-12-12 | 杨进 | 24h |
| 17 | 3.1.1.6 | 分大类客流接口SQL编写 | 3d? | 2013-12-12 | 2013-12-16 | 6d | start no earlier than 2013-12-12 | 杨进 | 24h |
| 18 | 3.1.1.7 | DC配送净额SQL编写 | 3d? | 2013-12-12 | 2013-12-16 | 6d | start no earlier than 2013-12-12 | 金辅君 | 24h |
| 19 | 3.1.1.8 | **招商租赁面积接口开发** | 3d? | 2013-12-12 | 2013-12-16 | 6d |  | 陈虹 | 24h |
| 20 | 3.1.1.8.1 | 招商租赁面积标准格式提供 | 3d? | 2013-12-12 | 2013-12-16 | 6d | start no earlier than 2013-12-12 |  |  |
| 21 | 3.1.1.8.2 | 业务部门按要求提供当前有效合同租赁面积 | 3d? | 2013-12-12 | 2013-12-16 | 6d | start no earlier than 2013-12-12 |  |  |
| 22 | 3.1.1.8.3 | 在系统中更新面积数据 | 3d? | 2013-12-12 | 2013-12-16 | 6d | start no earlier than 2013-12-12 |  |  |
| 23 | 3.1.1.8.4 | 编写租赁面积接口SQL脚本 | 3d? | 2013-12-12 | 2013-12-16 | 6d | start no earlier than 2013-12-12 |  |  |
| 24 | 3.1.2 | 所有接口KSH编写 | 1d? | 2013-12-18 | 2013-12-18 | 4d | finish no earlier than 2013-12-18 | 何德辉 | 8h |
| 25 | 3.1.3 | 数据自动抽取测试 | 1d? | 2013-12-19 | 2013-12-19 | 3d | finish no earlier than 2013-12-19 | 何德辉 | 8h |

| ID | WBS | Task | Duration | Start | Finish | Total slack | Constraint | Resources | Work |
| --- | --- | --- | --- | --- | --- | --- | --- | --- | --- |
| 26 | 3.2 | **生鲜办系统接口开发** | 5d? | 2013-12-12 | 2013-12-18 | 4d |  |  | 40h |
| 27 | 3.2.1 | **取数SQL脚本编写** | 3d? | 2013-12-12 | 2013-12-16 | 6d |  | 王勇昱 | 24h |
| 28 | 3.2.1.1 | 平均库存接口SQL编写 | 3d? | 2013-12-12 | 2013-12-16 | 6d | start no earlier than 2013-12-12 |  |  |
| 29 | 3.2.1.2 | 月末库存接口SQL编写 | 3d? | 2013-12-12 | 2013-12-16 | 6d | start no earlier than 2013-12-12 |  |  |
| 30 | 3.2.2 | 自动抽取数据作业编写 | 1d? | 2013-12-18 | 2013-12-18 | 4d | finish no earlier than 2013-12-18 | 王勇昱 | 8h |
| 31 | 3.2.3 | 数据自动抽取测试 | 1d? | 2013-12-18 | 2013-12-18 | 4d | finish no earlier than 2013-12-18 | 何德辉 | 8h |
| 32 | 3.3 | **金力系统接口开发** | 10d? | 2013-12-09 | 2013-12-20 | 2d |  |  | 40h |
| 33 | 3.3.1 | **取数SQL脚本编写** | 3d? | 2013-12-16 | 2013-12-18 | 4d |  | 任重昊 | 24h |
| 34 | 3.3.1.1 | 平均库存接口SQL编写 | 3d? | 2013-12-16 | 2013-12-18 | 4d | start no earlier than 2013-12-16 |  |  |
| 35 | 3.3.1.2 | 月末库存接口SQL编写 | 3d? | 2013-12-16 | 2013-12-18 | 4d | start no earlier than 2013-12-16 |  |  |
| 36 | 3.3.1.3 | 平均客单接口SQL编写 | 3d? | 2013-12-16 | 2013-12-18 | 4d | start no earlier than 2013-12-16 |  |  |
| 37 | 3.3.1.4 | 客流接口SQL编写 | 3d? | 2013-12-16 | 2013-12-18 | 4d | start no earlier than 2013-12-16 |  |  |
| 38 | 3.3.1.5 | 分大类平均客单接口SQL编写 | 3d? | 2013-12-16 | 2013-12-18 | 4d | start no earlier than 2013-12-16 |  |  |
| 39 | 3.3.1.6 | 分大类客流接口SQL编写 | 3d? | 2013-12-16 | 2013-12-18 | 4d | start no earlier than 2013-12-16 |  |  |
| 40 | 3.3.1.7 | 综合成本接口SQL编写 | 3d? | 2013-12-16 | 2013-12-18 | 4d | start no earlier than 2013-12-16 |  |  |
| 41 | 3.3.1.8 | 库位信息表接口SQL编写 | 3d? | 2013-12-16 | 2013-12-18 | 4d | start no earlier than 2013-12-16 |  |  |
| 42 | 3.3.2 | 自动抽取数据过程编写 | 1d? | 2013-12-09 | 2013-12-09 | 4d |  | 任重昊 | 8h |
| 43 | 3.3.3 | 数据自动抽取测试 | 1d? | 2013-12-20 | 2013-12-20 | 2d | finish no earlier than 2013-12-20 | 何德辉 | 8h |
| 44 | 4 | **接口实施与正式数据抽取** | 12d? | 2013-12-09 | 2013-12-24 | 0d |  | 何德辉 | 384h |
| 45 | 4.1 | **RETEK系统实施** | 7d? | 2013-12-16 | 2013-12-24 | 0d |  |  | 144h |
| 46 | 4.1.1 | KSH配置与实施 | 1d? | 2013-12-20 | 2013-12-20 | 2d | start no earlier than 2013-12-20 | 何德辉 | 8h |
| 47 | 4.1.2 | 历史数据抽取 | 7d? | 2013-12-16 | 2013-12-24 | 0d | finish no earlier than 2013-12-24 | 郭迪; 杨进 | 112h |
| 48 | 4.1.3 | 数据完整性和准确性复核 | 3d? | 2013-12-20 | 2013-12-24 | 0d | start no earlier than 2013-12-20 | 何德辉 | 24h |
| 49 | 4.2 | **生鲜办系统实施** | 12d? | 2013-12-09 | 2013-12-24 | 0d |  |  | 88h |
| 50 | 4.2.1 | 取数过程实施 | 1d? | 2013-12-20 | 2013-12-20 | 2d | start no earlier than 2013-12-20 | 何德辉 | 8h |
| 51 | 4.2.2 | 作业配置 | 1d? | 2013-12-09 | 2013-12-09 | 4d |  | 何德辉 | 8h |
| 52 | 4.2.3 | 历史数据抽取 | 6d? | 2013-12-13 | 2013-12-20 | 2d | finish no earlier than 2013-12-20 | 王勇昱 | 48h |
| 53 | 4.2.4 | 数据完整性和准确性复核 | 3d? | 2013-12-20 | 2013-12-24 | 0d | start no earlier than 2013-12-20 | 何德辉 | 24h |

| ID | WBS | Task | Duration | Start | Finish | Total slack | Constraint | Resources | Work |
| --- | --- | --- | --- | --- | --- | --- | --- | --- | --- |
| 54 | 4.3 | **金力系统实施** | 7d? | 2013-12-16 | 2013-12-24 | 0d |  |  | 56h |
| 55 | 4.3.1 | 过程配置与实施 | 1d? | 2013-12-20 | 2013-12-20 | 2d | start no earlier than 2013-12-20 | 何德辉 | 8h |
| 56 | 4.3.2 | 历史数据抽取 | 5d? | 2013-12-16 | 2013-12-20 | 2d | finish no earlier than 2013-12-20 | 任重昊 | 40h |
| 57 | 4.3.3 | 数据完整性和准确性复核 | 1d? | 2013-12-24 | 2013-12-24 | 0d | finish no earlier than 2013-12-24 | 何德辉 | 8h |
